# 调研阶段

Schedule from a web Gantt chart, 2025-08-11 to 2025-08-11.
Saturdays and Sundays are off

## Schedule

| ID | WBS | Task | Duration | Start | Finish |
| --- | --- | --- | --- | --- | --- |
| 2 | 1 | 调研工作启动会 | 1d | 2025-08-11 | 2025-08-11 |
| 3 | 2 | IDC网络环境调研 | 1d | 2025-08-11 | 2025-08-11 |
| 4 | 3 | 工厂网络环境调研 | 1d | 2025-08-11 | 2025-08-11 |
| 5 | 4 | 调研资料整理 | 1d | 2025-08-11 | 2025-08-11 |
| 6 | 5 | 调研工作确认会 | 1d | 2025-08-11 | 2025-08-11 |
